# Obergan_EPI_RK1

Schedule from MS Project, 2021-04-05 to 2021-07-07, status date 2021-06-01, costs in ₽, A marks actual dates.

## Calendars

- Стандартный: Mon-Fri 09:00-13:00, 14:00-18:00; Sat-Sun off. Exceptions (off unless hours are given): 2021-05-01 to 2021-05-03 (День труда), 2021-05-08 to 2021-05-10 (День победы), 2021-06-12 to 2021-06-14 (День России).

## Resources

| Resource | Group | Unit | Rate | Cost per use | Notes |
| --- | --- | --- | --- | --- | --- |
| Соколов | Программисты |  | 437.5 |  | Ведущий программист |
| Соломин | Программисты |  | 343.75 |  |  |
| Тимофеев | Программисты |  | 312.5 |  |  |
| Яковлева | Программисты |  | 312.5 |  |  |
| Петров | Дизайнеры |  | 468.75 |  | Руководитель дизайнерской группы |
| Кузнецов | Дизайнеры |  | 312.5 |  |  |
| Фомина | Редактор сайта |  | 250 |  |  |
| Преподаватели | Преподаватели |  | 700 |  |  |
| Программное обеспечение | ПО |  | 30000 | 5000 |  |
| Картриджи для принтера | Расходные материалы |  | 2500 |  |  |
| Бумага | Расходные материалы | шт | 400 |  |  |

## Schedule

| ID | WBS | Task | Type | Duration | Start | Finish | Predecessors | Complete | Remaining | Baseline start | Baseline finish | Baseline duration | Total slack | Free slack | Resources | Work | Actual work | Cost | Baseline cost | Actual cost |
| --- | --- | --- | --- | --- | --- | --- | --- | --- | --- | --- | --- | --- | --- | --- | --- | --- | --- | --- | --- | --- |
| 1 | 1 | Начало проекта | milestone | 0d | 2021-04-05 A | 2021-04-05 A |  | 100% |  | 2021-04-05 | 2021-04-05 | 0d |  |  |  |  |  |  |  |  |
| 2 | 2 | Установка ПО |  | 25d | 2021-04-06 A | 2021-05-12 A | 1FS+1d | 100% |  | 2021-04-06 | 2021-05-12 | 25d |  |  | Программное обеспечение; Соколов | 120h | 120h | 87,500 | 87,500 | 87,500 |
| 3 | 3 | Обучение персонала |  | 22.59d | 2021-04-20 A | 2021-05-24 A | 2SS+10d | 100% |  | 2021-04-20 | 2021-05-24 | 22.59d |  |  | Бумага [2 шт]; Картриджи для принтера; Кузнецов; Петров; Преподаватели; Соломин; Тимофеев; Яковлева; Соколов; Фомина | 960h | 960h | 371,922.02 | 371,522.02 | 371,922.02 |
| 4 | 4 | **Разработка представительких сайтов** |  | 25d | 2021-05-31 A | 2021-07-05 | 3 |  | 25d | 2021-05-24 | 2021-06-28 | 24.41d | 2d | 0d |  | 280h |  | 86,741.01 | 86,741.01 |  |
| 5 | 4.1 | **Разработка сайта 1** |  | 14.93d | 2021-05-31 A | 2021-06-21 |  |  | 14.93d | 2021-05-24 | 2021-06-15 | 14.55d | 4d | 0d |  | 160h |  | 49,678.51 | 49,678.51 |  |
| 6 | 4.1.1 | Разработка дизайна сайта 1 |  | 3.52d | 2021-05-31 A | 2021-06-10 |  |  | 3.52d | 2021-05-24 | 2021-05-31 | 3.29d | 4d | 0d | Кузнецов; Тимофеев; Фомина | 80h |  | 24,178.51 | 24,178.51 |  |
| 7 | 4.1.2 | Программирование сайта 1 |  | 2d | 2021-06-11 | 2021-06-21 | 6 |  |  | 2021-06-04 | 2021-06-15 | 2d | 4d | 0d | Тимофеев | 80h |  | 25,000 | 25,000 |  |
| 8 | 4.2 | **Разработка сайта 2** |  | 12.07d | 2021-06-17 | 2021-07-05 | 5FS-2d, 6FS-2d, 7FS-2d |  |  | 2021-06-10 | 2021-06-28 | 11.85d | 2d |  |  | 120h |  | 37,062.5 | 37,062.5 |  |
| 9 | 4.2.1 | Разработка дизайна сайта 2 |  | 1.88d | 2021-06-17 | 2021-06-21 |  |  |  | 2021-06-10 | 2021-06-15 | 1.88d | 4d | 0d | Кузнецов; Фомина | 40h |  | 11,562.5 | 11,562.5 |  |
| 10 | 4.2.2 | Программирование сайта 2 |  | 2d | 2021-07-02 | 2021-07-05 | 9 |  |  | 2021-06-25 | 2021-06-28 | 2d | 2d | 17.98d | Тимофеев | 80h |  | 25,000 | 25,000 |  |
| 11 | 5 | Представительские сайты созданы | milestone | 0d | 2021-07-05 | 2021-07-05 | 4 |  |  | 2021-06-28 | 2021-06-28 | 0d | 2d | 17.98d |  |  |  |  |  |  |
| 12 | 6 | **Разработка корпоративного сайта** |  | 27d | 2021-05-31 A | 2021-07-07 | 3 | 23% | 20.7d | 2021-05-24 | 2021-06-29 | 25d | 0d |  |  | 424h | 56h | 148,250 | 148,250 | 20,500 |
| 13 | 6.1 | Проектирование сайта |  | 5d | 2021-05-31 A | 2021-06-04 |  | 40% | 3d | 2021-05-24 | 2021-05-31 | 5d | 7d | 0d | Петров; Соколов | 80h | 32h | 36,250 | 36,250 | 14,500 |
| 14 | 6.2 | Программирование сайта |  | 15d | 2021-06-07 | 2021-06-28 | 13 |  |  | 2021-05-31 | 2021-06-22 | 15d | 7d |  | Соломин; Яковлева | 240h |  | 79,750 | 79,750 |  |
| 15 | 6.3 | Наполнение сайта |  | 5d | 2021-06-24 A | 2021-06-30 A | 14FS-3d | 100% |  | 2021-06-17 | 2021-06-22 | 3d |  |  | Фомина | 24h | 24h | 6,000 | 6,000 | 6,000 |
| 16 | 6.4 | Тестирование сайта |  | 5d | 2021-07-01 | 2021-07-07 | 15 |  |  | 2021-06-22 | 2021-06-29 | 5d | 0d |  | Соломин; Яковлева | 80h |  | 26,250 | 26,250 |  |
| 17 | 7 | Сдача сайта заказчику | milestone | 0d | 2021-07-07 | 2021-07-07 | 16 |  |  | 2021-06-29 | 2021-06-29 | 0d | 0d |  |  |  |  |  |  |  |
