# LR1_1

Schedule from MS Project, 2021-03-01 to 2021-07-27, status date 2021-05-14, costs in ₽, A marks actual dates.
Команда разработчиков из 16 человек занимается созданием карты / города на основе собственного модуля отображения. Проект должен быть завершен в течение / 6 месяцев. Бюджет проекта: 50 000 рублей

## Calendars

- Стандартный: Mon-Fri 09:00-13:00, 14:00-18:00; Sat-Sun off. Exceptions (off unless hours are given): 2021-03-06 to 2021-03-08 (Международный женский день), 2021-05-01 to 2021-05-03 (День труда), 2021-05-08 to 2021-05-10 (День победы), 2021-06-12 to 2021-06-14 (День России).

## Resources

| Resource | Group | Rate | Cost per use |
| --- | --- | --- | --- |
| Ведущий программист | Программирование | 10 | 100 |
| Программист#1 | Программирование | 7 | 50 |
| Программист#2 | Программирование | 7 | 50 |
| Программист#3 | Программирование | 7 | 50 |
| Программист#4 | Программирование | 7 | 50 |
| Системный аналитик | Анализ | 20 | 300 |
| Художник-дизайнер | Дизайн | 8 | 70 |
| Технический писатель | Документация | 5 | 20 |
| Web-дизайнер | Internet | 7 | 50 |
| 3D аниматор | Дизайн | 8 | 70 |
| Мультимедиа-корреспондент | М-медия | 3 | 20 |
| Наборщик данных #1 | Ввод данных | 2 | 10 |
| Наборщик данных #2 | Ввод данных | 2 | 10 |
| Наборщик данных #3 | Ввод данных | 2 | 10 |
| Наборщик данных #4 | Ввод данных | 2 | 10 |
| Наборщик данных #5 | Ввод данных | 2 | 10 |
| Дополнительный сервер |  | 2 |  |
| Программист#5 | Программирование | 7 | 50 |

## Schedule

| ID | WBS | Task | Type | Duration | Start | Finish | Predecessors | Complete | Remaining | Baseline start | Baseline finish | Baseline duration | Total slack | Free slack | Resources | Work | Actual work | Cost | Baseline cost | Actual cost |
| --- | --- | --- | --- | --- | --- | --- | --- | --- | --- | --- | --- | --- | --- | --- | --- | --- | --- | --- | --- | --- |
| 1 | 1 | Начало проекта | milestone | 0w | 2021-03-01 09:00 A | 2021-03-01 09:00 A |  | 100% |  | 2021-03-01 09:00 | 2021-03-01 09:00 | 0w |  |  |  |  |  |  |  |  |
| 2 | 2 | **Создание интерфейса** |  | 78.52d | 2021-03-01 09:00 A | 2021-06-23 14:11 | 1 | 84% | 12.4d | 2021-03-01 09:00 | 2021-06-24 15:44 | 79.72d | 2.96d | 4.86d |  | 560h | 320h | 5,650 | 5,650 | 3,610 |
| 3 | 2.1 | **Разработка дизайна интерфейса** |  | 30.38d | 2021-03-01 09:00 A | 2021-04-13 12:00 A |  | 100% |  | 2021-03-01 09:00 | 2021-04-06 15:00 | 25.62d |  |  |  | 320h | 320h | 2,770 | 2,770 | 2,770 |
| 4 | 2.1.1 | Разработка 2D графических элементов |  | 3w | 2021-03-01 09:00 A | 2021-03-23 12:00 A |  | 100% |  | 2021-03-01 09:00 | 2021-03-23 12:00 | 3w |  |  | Художник-дизайнер | 120h | 120h | 1,030 | 1,030 | 1,030 |
| 5 | 2.1.2 | Разработка 3D графических элементов |  | 2w | 2021-03-01 09:00 A | 2021-03-16 11:00 A | 4SS | 100% |  | 2021-03-01 09:00 | 2021-03-16 11:00 | 2w |  |  | 3D аниматор | 80h | 80h | 710 | 710 | 710 |
| 6 | 2.1.3 | Создание заставки |  | 3w | 2021-03-23 09:00 A | 2021-04-13 12:00 A | 5 | 100% |  | 2021-03-16 11:00 | 2021-04-06 15:00 | 3w |  |  | 3D аниматор | 120h | 120h | 1,030 | 1,030 | 1,030 |
| 7 | 2.2 | Программирование интерфейса |  | 1.5w | 2021-06-11 09:11 | 2021-06-23 14:11 | 3, 12 |  |  | 2021-06-15 10:44 | 2021-06-24 15:44 | 1.5w | 2.96d | 0d | Программист#3; Программист#4; Программист#1; Программист#2 | 240h |  | 1,880 | 1,880 |  |
| 8 | 3 | **Построение базы объектов** |  | 86.85d | 2021-03-23 14:00 A | 2021-07-27 11:46 |  | 41% | 51.07d | 2021-03-23 14:00 | 2021-07-16 15:25 | 80.18d | 0d |  | Дополнительный сервер | 5771.78h | 1622.52h | 16,131.04 | 15,152.85 | 7,028.99 |
| 9 | 3.1 | Анализ и построение структуры базы объектов |  | 3.08w | 2021-03-23 14:00 A | 2021-04-13 18:00 A |  | 100% |  | 2021-03-23 14:00 | 2021-04-06 15:00 | 2w |  |  | Системный аналитик | 80h | 80h | 1,900 | 1,900 | 1,900 |
| 10 | 3.2 | Программирование средств обработки базы объектов |  | 2.05w | 2021-04-15 09:49 A | 2021-04-29 11:46 A | 9 | 100% |  | 2021-04-07 15:49 | 2021-04-20 15:25 | 1.79w |  |  | Программист#3; Программист#4; Программист#1; Программист#2 | 270h | 270h | 2,090 | 1,880 | 2,090 |
| 11 | 3.3 | Наполнение базы объектов |  | 12w | 2021-04-29 11:46 A | 2021-07-27 11:46 | 10 | 16% | 10.07w | 2021-04-20 15:25 | 2021-07-16 15:25 | 12w | 0d |  | Наборщик данных #1; Наборщик данных #2; Наборщик данных #3; Наборщик данных #4; Наборщик данных #5 | 2400h | 386.1h | 4,850 | 4,850 | 822.2 |
| 12 | 4 | **Создание ядра GIS** |  | 71.02d | 2021-03-01 09:00 A | 2021-06-11 09:11 |  | 72% | 19.94d | 2021-03-01 09:00 | 2021-06-15 10:44 | 72.22d | 2.96d | 0d |  | 1880h | 1315.29h | 17,643.87 | 17,148.62 | 13,298 |
| 13 | 4.1 | Анализ и проектирование ядра |  | 1w | 2021-03-01 09:00 A | 2021-03-09 10:00 A |  | 100% |  | 2021-03-01 09:00 | 2021-03-09 10:00 | 1w |  |  | Ведущий программист; Системный аналитик; Программист#1; Программист#2; Программист#3; Программист#4 | 240h | 240h | 2,920 | 2,920 | 2,920 |
| 14 | 4.2 | Создание модели ядра |  | 2.29w | 2021-03-09 10:00 A | 2021-03-29 12:49 A | 13 | 100% |  | 2021-03-09 10:00 | 2021-03-23 10:49 | 2.02w |  |  | Ведущий программист; Программист#1; Программист#2; Программист#3; Программист#4 | 400h | 400h | 3,336.46 | 3,336.46 | 3,336.46 |
| 15 | 4.3 | Тестирование модели ядра |  | 0.25w | 2021-03-29 12:49 A | 2021-03-30 15:49 A | 14 | 100% |  | 2021-03-23 10:49 | 2021-03-24 12:49 | 0.25w |  |  | Программист#1; Программист#2; Программист#3; Программист#4 | 40h | 40h | 480 | 480 | 480 |
| 16 | 4.4 | Создание рабочей версии ядра |  | 10.01w | 2021-03-30 15:49 A | 2021-06-11 09:11 | 15 | 62% | 3.8w | 2021-03-24 12:49 | 2021-06-15 10:44 | 11.1w | 2.96d | 4.86d | Ведущий программист; Программист#1; Программист#2; Программист#3; Программист#4; Программист#5 | 1200h | 635.28h | 9,907.41 | 9,412.16 | 5,841.54 |
| 17 | 5 | Создание мультимедиа – наполнения |  | 6w | 2021-04-13 12:00 A | 2021-06-08 11:00 | 3 | 47% | 3.17w | 2021-04-06 15:00 | 2021-05-21 11:00 | 6w | 34.1d | 34.47d | Мультимедиа-корреспондент | 240h | 113h | 740 | 740 | 359 |
| 18 | 6 | Создание справочной системы |  | 2w | 2021-07-02 17:11 | 2021-07-19 10:11 | 7 |  |  | 2021-07-06 09:44 | 2021-07-20 11:44 | 2w | 6.2d | 13.82d | Технический писатель | 80h |  | 420 | 420 |  |
| 19 | 7 | **Создание руководства пользователя** |  | 17.25d | 2021-06-08 14:11 | 2021-07-02 16:11 | 7FS-10d |  |  | 2021-06-09 15:44 | 2021-07-06 09:44 | 17.38d | 2.96d | 4.86d |  | 160h |  | 1,010 | 1,010 |  |
| 20 | 7.1 | Разработка дизайна руководства |  | 1w | 2021-06-08 14:11 | 2021-06-16 14:11 |  |  |  | 2021-06-09 15:44 | 2021-06-17 15:44 | 1w | 2.96d | 0d | Художник-дизайнер | 40h |  | 390 | 390 |  |
| 21 | 7.2 | Написание руководства пользователя |  | 3w | 2021-06-10 14:11 | 2021-07-02 16:11 | 20SS+2d |  |  | 2021-06-11 15:44 | 2021-07-06 09:44 | 3w | 2.96d | 0d | Технический писатель | 120h |  | 620 | 620 |  |
| 22 | 8 | **Создание web – сайта и поддержка** |  | 22.9d | 2021-06-10 14:11 | 2021-07-14 12:22 |  |  |  | 2021-06-11 15:44 | 2021-07-16 11:44 | 23.62d | 2.96d | 0d |  | 248h |  | 2,106 | 2,106 |  |
| 23 | 8.1 | Разработка структуры сайта |  | 1d | 2021-06-10 14:11 | 2021-06-11 14:11 | 21SS |  |  | 2021-06-11 15:44 | 2021-06-15 15:44 | 1d | 2.96d | 0d | Web-дизайнер | 8h |  | 106 | 106 |  |
| 24 | 8.2 | Разработка дизайна сайта |  | 1.3w | 2021-06-11 14:11 | 2021-06-23 10:22 | 23 |  |  | 2021-06-15 15:44 | 2021-06-24 17:44 | 1.45w | 2.96d | 0d | 3D аниматор; Web-дизайнер; Художник-дизайнер | 120h |  | 1,110 | 1,110 |  |
| 25 | 8.3 | Наполнение сайта |  | 3w | 2021-06-23 10:22 | 2021-07-14 12:22 | 24 |  |  | 2021-06-24 17:44 | 2021-07-16 11:44 | 3w | 2.96d | 4.86d | Web-дизайнер | 120h |  | 890 | 890 |  |
| 26 | 9 | Тестирование сайта |  | 2.19w | 2021-07-07 12:22 | 2021-07-22 12:03 | 22FS-1w |  |  | 2021-07-09 11:44 | 2021-07-27 14:01 | 2.43w | 2.96d | 0d | Ведущий программист; Программист#1; Программист#2; Программист#3; Программист#4; Программист#5 | 480h |  | 4,099.39 | 3,945.85 |  |
| 27 | 10 | Сдача сайта в эксплуатацию | milestone | 0w | 2021-07-22 12:03 | 2021-07-22 12:03 | 26 |  |  | 2021-07-27 14:01 | 2021-07-27 14:01 | 0w | 2.96d | 4.86d |  |  |  |  |  |  |

| ID | WBS | Task | Type | Duration | Start | Finish | Complete | Remaining | Baseline start | Baseline finish | Baseline duration | Total slack | Constraint | Resources | Work | Actual work | Cost | Baseline cost | Actual cost |
| --- | --- | --- | --- | --- | --- | --- | --- | --- | --- | --- | --- | --- | --- | --- | --- | --- | --- | --- | --- |
| 28 | 11 | **Совещание** |  | 96.12d | 2021-03-03 09:00 A | 2021-07-21 10:00 | 52% | 45.77d | 2021-03-03 09:00 | 2021-07-21 10:00 | 96.12d | 0d |  |  | 146h | 76h | 1,698 | 1,281 | 888 |
| 29 | 11.1 | Совещание 1 | manual | 1h | 2021-03-03 09:00 A | 2021-03-03 10:00 A | 100% |  | 2021-03-03 09:00 | 2021-03-03 10:00 | 1h |  | start no earlier than 2021-03-03 09:00 | 3D аниматор; Web-дизайнер; Ведущий программист; Мультимедиа-корреспондент; Системный аналитик; Технический писатель; Художник-дизайнер | 7h | 7h | 81 | 61 | 81 |
| 30 | 11.2 | Совещание 2 | manual | 1h | 2021-03-10 09:00 A | 2021-03-10 10:00 A | 100% |  | 2021-03-10 09:00 | 2021-03-10 10:00 | 1h |  | start no earlier than 2021-03-10 09:00 | 3D аниматор; Web-дизайнер; Ведущий программист; Мультимедиа-корреспондент; Системный аналитик; Технический писатель; Художник-дизайнер | 7h | 7h | 81 | 61 | 81 |
| 31 | 11.3 | Совещание 3 | manual | 1h | 2021-03-17 09:00 A | 2021-03-17 10:00 A | 100% |  | 2021-03-17 09:00 | 2021-03-17 10:00 | 1h |  | start no earlier than 2021-03-17 09:00 | 3D аниматор; Web-дизайнер; Ведущий программист; Мультимедиа-корреспондент; Системный аналитик; Технический писатель; Художник-дизайнер | 7h | 7h | 81 | 61 | 81 |
| 32 | 11.4 | Совещание 4 | manual | 1h | 2021-03-24 09:00 A | 2021-03-24 10:00 A | 100% |  | 2021-03-24 09:00 | 2021-03-24 10:00 | 1h |  | start no earlier than 2021-03-24 09:00 | 3D аниматор; Web-дизайнер; Ведущий программист; Мультимедиа-корреспондент; Системный аналитик; Технический писатель; Художник-дизайнер | 7h | 7h | 81 | 61 | 81 |
| 33 | 11.5 | Совещание 5 | manual | 1h | 2021-03-31 09:00 A | 2021-03-31 10:00 A | 100% |  | 2021-03-31 09:00 | 2021-03-31 10:00 | 1h |  | start no earlier than 2021-03-31 09:00 | 3D аниматор; Web-дизайнер; Ведущий программист; Мультимедиа-корреспондент; Системный аналитик; Технический писатель; Художник-дизайнер | 7h | 7h | 81 | 61 | 81 |
| 34 | 11.6 | Совещание 6 | manual | 1h | 2021-04-07 09:00 A | 2021-04-07 10:00 A | 100% |  | 2021-04-07 09:00 | 2021-04-07 10:00 | 1h |  | start no earlier than 2021-04-07 09:00 | 3D аниматор; Web-дизайнер; Ведущий программист; Мультимедиа-корреспондент; Системный аналитик; Технический писатель; Художник-дизайнер | 7h | 7h | 81 | 61 | 81 |
| 35 | 11.7 | Совещание 7 | manual | 1h | 2021-04-14 09:00 A | 2021-04-14 10:00 A | 100% |  | 2021-04-14 09:00 | 2021-04-14 10:00 | 1h |  | start no earlier than 2021-04-14 09:00 | 3D аниматор; Web-дизайнер; Ведущий программист; Мультимедиа-корреспондент; Системный аналитик; Технический писатель; Художник-дизайнер | 7h | 7h | 81 | 61 | 81 |
| 36 | 11.8 | Совещание 8 | manual | 1h | 2021-04-21 09:00 A | 2021-04-21 10:00 A | 100% |  | 2021-04-21 09:00 | 2021-04-21 10:00 | 1h |  | start no earlier than 2021-04-21 09:00 | 3D аниматор; Web-дизайнер; Ведущий программист; Системный аналитик; Технический писатель; Художник-дизайнер | 6h | 6h | 78 | 61 | 78 |
| 37 | 11.9 | Совещание 9 | manual | 1h | 2021-04-28 09:00 A | 2021-04-28 10:00 A | 100% |  | 2021-04-28 09:00 | 2021-04-28 10:00 | 1h |  | start no earlier than 2021-04-28 09:00 | 3D аниматор; Web-дизайнер; Ведущий программист; Мультимедиа-корреспондент; Системный аналитик; Технический писатель; Художник-дизайнер | 7h | 7h | 81 | 61 | 81 |
| 38 | 11.10 | Совещание 10 | manual | 1h | 2021-05-05 09:00 A | 2021-05-05 10:00 A | 100% |  | 2021-05-05 09:00 | 2021-05-05 10:00 | 1h |  | start no earlier than 2021-05-05 09:00 | 3D аниматор; Web-дизайнер; Ведущий программист; Мультимедиа-корреспондент; Системный аналитик; Технический писатель; Художник-дизайнер | 7h | 7h | 81 | 61 | 81 |
| 39 | 11.11 | Совещание 11 | manual | 1h | 2021-05-12 09:00 A | 2021-05-12 10:00 A | 100% |  | 2021-05-12 09:00 | 2021-05-12 10:00 | 1h |  | start no earlier than 2021-05-12 09:00 | 3D аниматор; Web-дизайнер; Ведущий программист; Мультимедиа-корреспондент; Системный аналитик; Технический писатель; Художник-дизайнер | 7h | 7h | 81 | 61 | 81 |
| 40 | 11.12 | Совещание 12 | manual | 1h | 2021-05-19 09:00 | 2021-05-19 10:00 |  |  | 2021-05-19 09:00 | 2021-05-19 10:00 | 1h |  | start no earlier than 2021-05-19 09:00 | 3D аниматор; Web-дизайнер; Ведущий программист; Мультимедиа-корреспондент; Системный аналитик; Технический писатель; Художник-дизайнер | 7h |  | 81 | 61 |  |
| 41 | 11.13 | Совещание 13 | manual | 1h | 2021-05-26 09:00 | 2021-05-26 10:00 |  |  | 2021-05-26 09:00 | 2021-05-26 10:00 | 1h |  | start no earlier than 2021-05-26 09:00 | 3D аниматор; Web-дизайнер; Ведущий программист; Мультимедиа-корреспондент; Системный аналитик; Технический писатель; Художник-дизайнер | 7h |  | 81 | 61 |  |
| 42 | 11.14 | Совещание 14 | manual | 1h | 2021-06-02 09:00 | 2021-06-02 10:00 |  |  | 2021-06-02 09:00 | 2021-06-02 10:00 | 1h |  | start no earlier than 2021-06-02 09:00 | 3D аниматор; Web-дизайнер; Ведущий программист; Мультимедиа-корреспондент; Системный аналитик; Технический писатель; Художник-дизайнер | 7h |  | 81 | 61 |  |
| 43 | 11.15 | Совещание 15 | manual | 1h | 2021-06-09 09:00 | 2021-06-09 10:00 |  |  | 2021-06-09 09:00 | 2021-06-09 10:00 | 1h |  | start no earlier than 2021-06-09 09:00 | 3D аниматор; Web-дизайнер; Ведущий программист; Мультимедиа-корреспондент; Системный аналитик; Технический писатель; Художник-дизайнер | 7h |  | 81 | 61 |  |
| 44 | 11.16 | Совещание 16 | manual | 1h | 2021-06-16 09:00 | 2021-06-16 10:00 |  |  | 2021-06-16 09:00 | 2021-06-16 10:00 | 1h |  | start no earlier than 2021-06-16 09:00 | 3D аниматор; Web-дизайнер; Ведущий программист; Мультимедиа-корреспондент; Системный аналитик; Технический писатель; Художник-дизайнер | 7h |  | 81 | 61 |  |
| 45 | 11.17 | Совещание 17 | manual | 1h | 2021-06-23 09:00 | 2021-06-23 10:00 |  |  | 2021-06-23 09:00 | 2021-06-23 10:00 | 1h |  | start no earlier than 2021-06-23 09:00 | 3D аниматор; Web-дизайнер; Ведущий программист; Мультимедиа-корреспондент; Системный аналитик; Технический писатель; Художник-дизайнер | 7h |  | 81 | 61 |  |
| 46 | 11.18 | Совещание 18 | manual | 1h | 2021-06-30 09:00 | 2021-06-30 10:00 |  |  | 2021-06-30 09:00 | 2021-06-30 10:00 | 1h |  | start no earlier than 2021-06-30 09:00 | 3D аниматор; Web-дизайнер; Ведущий программист; Мультимедиа-корреспондент; Системный аналитик; Технический писатель; Художник-дизайнер | 7h |  | 81 | 61 |  |
| 47 | 11.19 | Совещание 19 | manual | 1h | 2021-07-07 09:00 | 2021-07-07 10:00 |  |  | 2021-07-07 09:00 | 2021-07-07 10:00 | 1h |  | start no earlier than 2021-07-07 09:00 | 3D аниматор; Web-дизайнер; Ведущий программист; Мультимедиа-корреспондент; Системный аналитик; Технический писатель; Художник-дизайнер | 7h |  | 81 | 61 |  |
| 48 | 11.20 | Совещание 20 | manual | 1h | 2021-07-14 09:00 | 2021-07-14 10:00 |  |  | 2021-07-14 09:00 | 2021-07-14 10:00 | 1h |  | start no earlier than 2021-07-14 09:00 | 3D аниматор; Web-дизайнер; Ведущий программист; Мультимедиа-корреспондент; Системный аналитик; Технический писатель; Художник-дизайнер | 7h |  | 81 | 61 |  |
| 49 | 11.21 | Совещание 21 | manual | 1h | 2021-07-21 09:00 | 2021-07-21 10:00 |  |  | 2021-07-21 09:00 | 2021-07-21 10:00 | 1h |  | start no earlier than 2021-07-21 09:00 | 3D аниматор; Web-дизайнер; Ведущий программист; Мультимедиа-корреспондент; Системный аналитик; Технический писатель; Художник-дизайнер | 7h |  | 81 | 61 |  |
