# LR1_1

Schedule from MS Project, 2021-03-01 to 2021-08-11, status date 2021-05-14, costs in ₽, A marks actual dates.
Команда разработчиков из 16 человек занимается созданием карты / города на основе собственного модуля отображения. Проект должен быть завершен в течение / 6 месяцев. Бюджет проекта: 50 000 рублей

## Calendars

- Стандартный: Mon-Fri 09:00-13:00, 14:00-18:00; Sat-Sun off. Exceptions (off unless hours are given): 2021-03-06 to 2021-03-08 (Международный женский день), 2021-05-01 to 2021-05-03 (День труда), 2021-05-08 to 2021-05-10 (День победы), 2021-06-12 to 2021-06-14 (День России).

## Resources

| Resource | Group | Rate | Cost per use |
| --- | --- | --- | --- |
| Ведущий программист | Программирование | 12 | 100 |
| Программист#1 | Программирование | 7 | 50 |
| Программист#2 | Программирование | 7 | 50 |
| Программист#3 | Программирование | 7 | 50 |
| Программист#4 | Программирование | 7 | 50 |
| Системный аналитик | Анализ | 20 | 300 |
| Художник-дизайнер | Дизайн | 8 | 70 |
| Технический писатель | Документация | 5 | 20 |
| Web-дизайнер | Internet | 7 | 50 |
| 3D аниматор | Дизайн | 8 | 70 |
| Мультимедиа-корреспондент | М-медия | 3 | 20 |
| Наборщик данных #1 | Ввод данных | 2 | 10 |
| Наборщик данных #2 | Ввод данных | 2 | 10 |
| Наборщик данных #3 | Ввод данных | 2 | 10 |
| Наборщик данных #4 | Ввод данных | 2 | 10 |
| Наборщик данных #5 | Ввод данных | 2 | 10 |
| Дополнительный сервер |  | 2.1 |  |
| Программист#5 | Программирование | 7 | 50 |
| 14 |  |  |  |

## Schedule

| ID | WBS | Task | Type | Duration | Start | Finish | Predecessors | Complete | Remaining | Baseline start | Baseline finish | Baseline duration | Total slack | Free slack | Resources | Work | Actual work | Cost | Baseline cost | Actual cost |
| --- | --- | --- | --- | --- | --- | --- | --- | --- | --- | --- | --- | --- | --- | --- | --- | --- | --- | --- | --- | --- |
| 1 | 1 | Начало проекта | milestone | 0w | 2021-03-01 09:00 A | 2021-03-01 09:00 A |  | 100% |  | 2021-03-01 09:00 | 2021-03-01 09:00 | 0w |  |  |  |  |  |  |  |  |
| 2 | 2 | **База объектов** |  | 86.85d | 2021-03-23 14:00 A | 2021-07-27 11:46 |  | 41% | 51.07d |  |  |  | 0d |  |  | 2750h | 736.1h | 8,840 |  | 4,812.2 |
| 3 | 2.1 | Анализ и построение структуры базы объектов |  | 3.08w | 2021-03-23 14:00 A | 2021-04-13 18:00 A |  | 100% |  | 2021-03-23 14:00 | 2021-04-06 15:00 | 2w |  |  | Системный аналитик | 80h | 80h | 1,900 | 1,900 | 1,900 |
| 4 | 2.2 | Программирование средств обработки базы объектов |  | 2.05w | 2021-04-15 09:49 A | 2021-04-29 11:46 A | 3 | 100% |  | 2021-04-07 15:49 | 2021-04-20 15:25 | 1.79w |  |  | Программист#3; Программист#4; Программист#1; Программист#2 | 270h | 270h | 2,090 | 1,880 | 2,090 |
| 5 | 2.3 | Наполнение базы объектов |  | 12w | 2021-04-29 11:46 A | 2021-07-27 11:46 | 4 | 16% | 10.07w | 2021-04-20 15:25 | 2021-07-16 15:25 | 12w | 0d |  | Наборщик данных #1; Наборщик данных #2; Наборщик данных #3; Наборщик данных #4; Наборщик данных #5 | 2400h | 386.1h | 4,850 | 4,850 | 822.2 |
| 6 | 3 | **Ядро** |  | 71.02d | 2021-03-01 09:00 A | 2021-06-11 09:11 |  | 72% | 19.94d |  |  |  | 8.82d | 0d |  | 1880h | 1315.29h | 16,643.87 |  | 12,578 |
| 7 | 3.1 | Анализ и проектирование ядра |  | 1w | 2021-03-01 09:00 A | 2021-03-09 10:00 A |  | 100% |  | 2021-03-01 09:00 | 2021-03-09 10:00 | 1w |  |  | Ведущий программист; Системный аналитик; Программист#1; Программист#2; Программист#3; Программист#4 | 240h | 240h | 2,920 | 2,920 | 2,920 |
| 8 | 3.2 | Создание модели ядра |  | 2.29w | 2021-03-09 10:00 A | 2021-03-29 12:49 A | 7 | 100% |  | 2021-03-09 10:00 | 2021-03-23 10:49 | 2.02w |  |  | Ведущий программист; Программист#1; Программист#2; Программист#3; Программист#4 | 400h | 400h | 3,336.46 | 3,336.46 | 3,336.46 |
| 9 | 3.3 | Тестирование модели ядра |  | 0.25w | 2021-03-29 12:49 A | 2021-03-30 15:49 A | 8 | 100% |  | 2021-03-23 10:49 | 2021-03-24 12:49 | 0.25w |  |  | Программист#1; Программист#2; Программист#3; Программист#4 | 40h | 40h | 480 | 480 | 480 |
| 10 | 3.4 | Создание рабочей версии ядра |  | 10.01w | 2021-03-30 15:49 A | 2021-06-11 09:11 | 9 | 62% | 3.8w | 2021-03-24 12:49 | 2021-06-15 10:44 | 11.1w | 8.82d |  | Ведущий программист; Программист#1; Программист#2; Программист#3; Программист#4; Программист#5 | 1200h | 635.28h | 9,907.41 | 9,412.16 | 5,841.54 |
| 11 | 4 | **Разработка графических элементов** |  | 15.38d | 2021-03-01 09:00 A | 2021-03-23 12:00 A |  | 100% |  |  |  |  |  |  |  | 200h | 200h | 1,740 |  | 1,740 |
| 12 | 4.1 | Разработка 2D графических элементов |  | 3w | 2021-03-01 09:00 A | 2021-03-23 12:00 A |  | 100% |  | 2021-03-01 09:00 | 2021-03-23 12:00 | 3w |  |  | Художник-дизайнер | 120h | 120h | 1,030 | 1,030 | 1,030 |
| 13 | 4.2 | Разработка 3D графических элементов |  | 2w | 2021-03-01 09:00 A | 2021-03-16 11:00 A |  | 100% |  | 2021-03-01 09:00 | 2021-03-16 11:00 | 2w |  |  | 3D аниматор | 80h | 80h | 710 | 710 | 710 |
| 14 | 5 | **Сайт** |  | 78.52d | 2021-03-01 09:00 A | 2021-06-23 14:11 |  | 53% | 37.2d |  |  |  | 8.82d | 0d |  | 488h | 120h | 4,126 |  | 1,030 |
| 15 | 5.1 | Создание заставки |  | 3w | 2021-03-23 09:00 A | 2021-04-13 12:00 A | 11 | 100% |  | 2021-03-16 11:00 | 2021-04-06 15:00 | 3w |  |  | 3D аниматор | 120h | 120h | 1,030 | 1,030 | 1,030 |
| 16 | 5.2 | Разработка структуры сайта |  | 1d | 2021-03-01 09:00 | 2021-03-01 18:00 |  |  |  | 2021-06-11 15:44 | 2021-06-15 15:44 | 1d | 73.85d | 0d | Web-дизайнер | 8h |  | 106 | 106 |  |
| 17 | 5.3 | Разработка дизайна сайта |  | 1w | 2021-03-02 09:00 | 2021-03-09 18:00 | 16 |  |  | 2021-06-15 15:44 | 2021-06-24 17:44 | 1.45w | 73.85d | 65.02d | 3D аниматор; Web-дизайнер; Художник-дизайнер | 120h |  | 1,110 | 1,110 |  |
| 18 | 5.4 | Программирование интерфейса |  | 1.5w | 2021-06-11 09:11 | 2021-06-23 14:11 | 17, 6 |  |  | 2021-06-15 10:44 | 2021-06-24 15:44 | 1.5w | 8.82d | 0d | Программист#3; Программист#4; Программист#1; Программист#2 | 240h |  | 1,880 | 1,880 |  |
| 19 | 6 | **Руководство** |  | 15d | 2021-06-23 14:11 | 2021-07-14 14:11 | 14 |  |  |  |  |  | 19.78d |  |  | 160h |  | 1,010 |  |  |
| 20 | 6.1 | Разработка дизайна руководства |  | 1w | 2021-06-23 14:11 | 2021-06-30 14:11 |  |  |  | 2021-06-09 15:44 | 2021-06-17 15:44 | 1w | 29.78d |  | Художник-дизайнер | 40h |  | 390 | 390 |  |
| 21 | 6.2 | Написание руководства пользователя |  | 3w | 2021-06-23 14:11 | 2021-07-14 14:11 |  |  |  | 2021-06-11 15:44 | 2021-07-06 09:44 | 3w | 19.78d |  | Технический писатель | 120h |  | 620 | 620 |  |
| 22 | 7 | **Наполнение** |  | 63.15d | 2021-04-13 12:00 A | 2021-07-14 14:11 |  | 26% | 46.93d |  |  |  | 8.82d |  |  | 440h | 113h | 2,050 |  | 359 |
| 23 | 7.1 | Создание мультимедиа – наполнения |  | 6w | 2021-04-13 12:00 A | 2021-06-07 17:00 |  | 47% | 3.17w | 2021-04-06 15:00 | 2021-05-21 11:00 | 6w | 34.47d |  | Мультимедиа-корреспондент | 240h | 113h | 740 | 740 | 359 |
| 24 | 7.2 | Создание справочной системы |  | 2w | 2021-06-23 14:11 | 2021-07-07 14:11 | 18 |  |  | 2021-07-06 09:44 | 2021-07-20 11:44 | 2w | 13.82d |  | Технический писатель | 80h |  | 420 | 420 |  |
| 25 | 7.3 | Наполнение сайта |  | 3w | 2021-06-23 14:11 | 2021-07-14 14:11 | 14 |  |  | 2021-06-24 17:44 | 2021-07-16 11:44 | 3w | 8.82d |  | Web-дизайнер | 120h |  | 890 | 890 |  |
| 26 | 8 | Тестирование сайта |  | 2.19w | 2021-07-27 11:46 | 2021-08-11 11:28 | 22, 2 |  |  | 2021-07-09 11:44 | 2021-07-27 14:01 | 2.43w | 0d |  | Ведущий программист; Программист#1; Программист#2; Программист#3; Программист#4; Программист#5 | 480h |  | 4,099.39 | 3,945.85 |  |
| 27 | 9 | Сдача сайта в эксплуатацию | milestone | 0w | 2021-08-11 11:28 | 2021-08-11 11:28 | 26 |  |  | 2021-07-27 14:01 | 2021-07-27 14:01 | 0w | 0d |  |  |  |  |  |  |  |

| ID | WBS | Task | Type | Duration | Start | Finish | Complete | Remaining | Baseline start | Baseline finish | Baseline duration | Total slack | Constraint | Resources | Work | Actual work | Cost | Baseline cost | Actual cost |
| --- | --- | --- | --- | --- | --- | --- | --- | --- | --- | --- | --- | --- | --- | --- | --- | --- | --- | --- | --- |
| 28 | 10 | **Совещание** |  | 96.12d | 2021-03-03 09:00 A | 2021-07-21 10:00 | 52% | 45.77d | 2021-03-03 09:00 | 2021-07-21 10:00 | 96.12d | 0d |  |  | 146h | 76h | 1,698 | 1,281 | 888 |
| 29 | 10.1 | Совещание 1 | manual | 1h | 2021-03-03 09:00 A | 2021-03-03 10:00 A | 100% |  | 2021-03-03 09:00 | 2021-03-03 10:00 | 1h |  | start no earlier than 2021-03-03 09:00 | 3D аниматор; Web-дизайнер; Ведущий программист; Мультимедиа-корреспондент; Системный аналитик; Технический писатель; Художник-дизайнер | 7h | 7h | 81 | 61 | 81 |
| 30 | 10.2 | Совещание 2 | manual | 1h | 2021-03-10 09:00 A | 2021-03-10 10:00 A | 100% |  | 2021-03-10 09:00 | 2021-03-10 10:00 | 1h |  | start no earlier than 2021-03-10 09:00 | 3D аниматор; Web-дизайнер; Ведущий программист; Мультимедиа-корреспондент; Системный аналитик; Технический писатель; Художник-дизайнер | 7h | 7h | 81 | 61 | 81 |
| 31 | 10.3 | Совещание 3 | manual | 1h | 2021-03-17 09:00 A | 2021-03-17 10:00 A | 100% |  | 2021-03-17 09:00 | 2021-03-17 10:00 | 1h |  | start no earlier than 2021-03-17 09:00 | 3D аниматор; Web-дизайнер; Ведущий программист; Мультимедиа-корреспондент; Системный аналитик; Технический писатель; Художник-дизайнер | 7h | 7h | 81 | 61 | 81 |
| 32 | 10.4 | Совещание 4 | manual | 1h | 2021-03-24 09:00 A | 2021-03-24 10:00 A | 100% |  | 2021-03-24 09:00 | 2021-03-24 10:00 | 1h |  | start no earlier than 2021-03-24 09:00 | 3D аниматор; Web-дизайнер; Ведущий программист; Мультимедиа-корреспондент; Системный аналитик; Технический писатель; Художник-дизайнер | 7h | 7h | 81 | 61 | 81 |
| 33 | 10.5 | Совещание 5 | manual | 1h | 2021-03-31 09:00 A | 2021-03-31 10:00 A | 100% |  | 2021-03-31 09:00 | 2021-03-31 10:00 | 1h |  | start no earlier than 2021-03-31 09:00 | 3D аниматор; Web-дизайнер; Ведущий программист; Мультимедиа-корреспондент; Системный аналитик; Технический писатель; Художник-дизайнер | 7h | 7h | 81 | 61 | 81 |
| 34 | 10.6 | Совещание 6 | manual | 1h | 2021-04-07 09:00 A | 2021-04-07 10:00 A | 100% |  | 2021-04-07 09:00 | 2021-04-07 10:00 | 1h |  | start no earlier than 2021-04-07 09:00 | 3D аниматор; Web-дизайнер; Ведущий программист; Мультимедиа-корреспондент; Системный аналитик; Технический писатель; Художник-дизайнер | 7h | 7h | 81 | 61 | 81 |
| 35 | 10.7 | Совещание 7 | manual | 1h | 2021-04-14 09:00 A | 2021-04-14 10:00 A | 100% |  | 2021-04-14 09:00 | 2021-04-14 10:00 | 1h |  | start no earlier than 2021-04-14 09:00 | 3D аниматор; Web-дизайнер; Ведущий программист; Мультимедиа-корреспондент; Системный аналитик; Технический писатель; Художник-дизайнер | 7h | 7h | 81 | 61 | 81 |
| 36 | 10.8 | Совещание 8 | manual | 1h | 2021-04-21 09:00 A | 2021-04-21 10:00 A | 100% |  | 2021-04-21 09:00 | 2021-04-21 10:00 | 1h |  | start no earlier than 2021-04-21 09:00 | 3D аниматор; Web-дизайнер; Ведущий программист; Системный аналитик; Технический писатель; Художник-дизайнер | 6h | 6h | 78 | 61 | 78 |
| 37 | 10.9 | Совещание 9 | manual | 1h | 2021-04-28 09:00 A | 2021-04-28 10:00 A | 100% |  | 2021-04-28 09:00 | 2021-04-28 10:00 | 1h |  | start no earlier than 2021-04-28 09:00 | 3D аниматор; Web-дизайнер; Ведущий программист; Мультимедиа-корреспондент; Системный аналитик; Технический писатель; Художник-дизайнер | 7h | 7h | 81 | 61 | 81 |
| 38 | 10.10 | Совещание 10 | manual | 1h | 2021-05-05 09:00 A | 2021-05-05 10:00 A | 100% |  | 2021-05-05 09:00 | 2021-05-05 10:00 | 1h |  | start no earlier than 2021-05-05 09:00 | 3D аниматор; Web-дизайнер; Ведущий программист; Мультимедиа-корреспондент; Системный аналитик; Технический писатель; Художник-дизайнер | 7h | 7h | 81 | 61 | 81 |
| 39 | 10.11 | Совещание 11 | manual | 1h | 2021-05-12 09:00 A | 2021-05-12 10:00 A | 100% |  | 2021-05-12 09:00 | 2021-05-12 10:00 | 1h |  | start no earlier than 2021-05-12 09:00 | 3D аниматор; Web-дизайнер; Ведущий программист; Мультимедиа-корреспондент; Системный аналитик; Технический писатель; Художник-дизайнер | 7h | 7h | 81 | 61 | 81 |
| 40 | 10.12 | Совещание 12 | manual | 1h | 2021-05-19 09:00 | 2021-05-19 10:00 |  |  | 2021-05-19 09:00 | 2021-05-19 10:00 | 1h |  | start no earlier than 2021-05-19 09:00 | 3D аниматор; Web-дизайнер; Ведущий программист; Мультимедиа-корреспондент; Системный аналитик; Технический писатель; Художник-дизайнер | 7h |  | 81 | 61 |  |
| 41 | 10.13 | Совещание 13 | manual | 1h | 2021-05-26 09:00 | 2021-05-26 10:00 |  |  | 2021-05-26 09:00 | 2021-05-26 10:00 | 1h |  | start no earlier than 2021-05-26 09:00 | 3D аниматор; Web-дизайнер; Ведущий программист; Мультимедиа-корреспондент; Системный аналитик; Технический писатель; Художник-дизайнер | 7h |  | 81 | 61 |  |
| 42 | 10.14 | Совещание 14 | manual | 1h | 2021-06-02 09:00 | 2021-06-02 10:00 |  |  | 2021-06-02 09:00 | 2021-06-02 10:00 | 1h |  | start no earlier than 2021-06-02 09:00 | 3D аниматор; Web-дизайнер; Ведущий программист; Мультимедиа-корреспондент; Системный аналитик; Технический писатель; Художник-дизайнер | 7h |  | 81 | 61 |  |
| 43 | 10.15 | Совещание 15 | manual | 1h | 2021-06-09 09:00 | 2021-06-09 10:00 |  |  | 2021-06-09 09:00 | 2021-06-09 10:00 | 1h |  | start no earlier than 2021-06-09 09:00 | 3D аниматор; Web-дизайнер; Ведущий программист; Мультимедиа-корреспондент; Системный аналитик; Технический писатель; Художник-дизайнер | 7h |  | 81 | 61 |  |
| 44 | 10.16 | Совещание 16 | manual | 1h | 2021-06-16 09:00 | 2021-06-16 10:00 |  |  | 2021-06-16 09:00 | 2021-06-16 10:00 | 1h |  | start no earlier than 2021-06-16 09:00 | 3D аниматор; Web-дизайнер; Ведущий программист; Мультимедиа-корреспондент; Системный аналитик; Технический писатель; Художник-дизайнер | 7h |  | 81 | 61 |  |
| 45 | 10.17 | Совещание 17 | manual | 1h | 2021-06-23 09:00 | 2021-06-23 10:00 |  |  | 2021-06-23 09:00 | 2021-06-23 10:00 | 1h |  | start no earlier than 2021-06-23 09:00 | 3D аниматор; Web-дизайнер; Ведущий программист; Мультимедиа-корреспондент; Системный аналитик; Технический писатель; Художник-дизайнер | 7h |  | 81 | 61 |  |
| 46 | 10.18 | Совещание 18 | manual | 1h | 2021-06-30 09:00 | 2021-06-30 10:00 |  |  | 2021-06-30 09:00 | 2021-06-30 10:00 | 1h |  | start no earlier than 2021-06-30 09:00 | 3D аниматор; Web-дизайнер; Ведущий программист; Мультимедиа-корреспондент; Системный аналитик; Технический писатель; Художник-дизайнер | 7h |  | 81 | 61 |  |
| 47 | 10.19 | Совещание 19 | manual | 1h | 2021-07-07 09:00 | 2021-07-07 10:00 |  |  | 2021-07-07 09:00 | 2021-07-07 10:00 | 1h |  | start no earlier than 2021-07-07 09:00 | 3D аниматор; Web-дизайнер; Ведущий программист; Мультимедиа-корреспондент; Системный аналитик; Технический писатель; Художник-дизайнер | 7h |  | 81 | 61 |  |
| 48 | 10.20 | Совещание 20 | manual | 1h | 2021-07-14 09:00 | 2021-07-14 10:00 |  |  | 2021-07-14 09:00 | 2021-07-14 10:00 | 1h |  | start no earlier than 2021-07-14 09:00 | 3D аниматор; Web-дизайнер; Ведущий программист; Мультимедиа-корреспондент; Системный аналитик; Технический писатель; Художник-дизайнер | 7h |  | 81 | 61 |  |
| 49 | 10.21 | Совещание 21 | manual | 1h | 2021-07-21 09:00 | 2021-07-21 10:00 |  |  | 2021-07-21 09:00 | 2021-07-21 10:00 | 1h |  | start no earlier than 2021-07-21 09:00 | 3D аниматор; Web-дизайнер; Ведущий программист; Мультимедиа-корреспондент; Системный аналитик; Технический писатель; Художник-дизайнер | 7h |  | 81 | 61 |  |
